Schedule from MS Project, 2018-03-05 to 2018-07-30, costs in $, A marks actual dates.

## Calendars

- Standard: Mon-Fri 08:00-12:00, 13:00-17:00; Sat-Sun off. Exceptions (off unless hours are given): 2018-03-17 08:00-12:00, 13:00-17:00, 2018-04-07 08:00-12:00, 13:00-17:00, 2018-04-14 08:00-12:00, 13:00-17:00.

## Resources

| Resource | Group | Rate |
| --- | --- | --- |
| Ali | developer | 5 |
| Vahid | developer | 5 |
| MohamadAmin | developer | 5 |

## Schedule

| ID | WBS | Task | Type | Duration | Start | Finish | Predecessors | Complete | Deadline | Resources | Work | Actual work | Cost | Actual cost |
| --- | --- | --- | --- | --- | --- | --- | --- | --- | --- | --- | --- | --- | --- | --- |
| 1 | 1 | **فاز اول پروژه** |  | 2d | 2018-03-05 A | 2018-03-07 A |  | 100% | 2018-03-04 |  |  |  |  |  |
| 2 | 1.1 | **تهیه پروپوزال** |  | 0.38d | 2018-03-05 A | 2018-03-05 A |  | 100% | 2018-03-04 |  |  |  |  |  |
| 3 | 1.1.1 | اهداف و توجیه |  | 1h | 2018-03-05 A | 2018-03-05 A |  | 100% |  |  |  |  |  |  |
| 4 | 1.1.2 | معرفی و مفاد قرارداد |  | 1h | 2018-03-05 A | 2018-03-05 A |  | 100% |  |  |  |  |  |  |
| 5 | 1.1.3 | **معرفی سیستم و توضیح تکنولوژی** |  | 0.38d | 2018-03-05 A | 2018-03-05 A |  | 100% |  |  |  |  |  |  |
| 6 | 1.1.3.1 | تهیه گزینه راه حل‌های تکنولوژی |  | 1h | 2018-03-05 A | 2018-03-05 A |  | 100% |  |  |  |  |  |  |
| 7 | 1.1.3.2 | امکان سنجی گزینه ها |  | 1h | 2018-03-05 A | 2018-03-05 A | 6 | 100% |  |  |  |  |  |  |
| 8 | 1.1.3.3 | انتخاب گزینه راه حل نهایی |  | 1h | 2018-03-05 A | 2018-03-05 A | 7 | 100% |  |  |  |  |  |  |
| 9 | 1.1.4 | **پوشش نیازمندی‌های کارکردی و غیرکارکردی** |  | 0.12d | 2018-03-05 A | 2018-03-05 A |  | 100% |  |  |  |  |  |  |
| 10 | 1.1.4.1 | نیازمندی‌های کارکردی |  | 1h | 2018-03-05 A | 2018-03-05 A |  | 100% |  |  |  |  |  |  |
| 11 | 1.1.4.2 | نیازمندی‌های غیرکارکردی |  | 1h | 2018-03-05 A | 2018-03-05 A |  | 100% |  |  |  |  |  |  |
| 12 | 1.1.5 | برآورد زمانی |  | 1h | 2018-03-05 A | 2018-03-05 A |  | 100% |  |  |  |  |  |  |
| 13 | 1.1.6 | برآوردمالی |  | 1h | 2018-03-05 A | 2018-03-05 A | 12 | 100% |  |  |  |  |  |  |
| 14 | 1.1.7 | مراحل اجرای پروژه |  | 1h | 2018-03-05 A | 2018-03-05 A |  | 100% |  |  |  |  |  |  |
| 15 | 1.1.8 | معرفی اعضای گروه |  | 1h | 2018-03-05 A | 2018-03-05 A |  | 100% |  |  |  |  |  |  |
| 16 | 1.1.9 | بیان نمرات اضافی |  | 1h | 2018-03-05 A | 2018-03-05 A |  | 100% |  |  |  |  |  |  |
| 17 | 1.2 | بازخوانی و تصحیح پروپوزال و آماده سازی نسخه نهایی |  | 1d | 2018-03-06 A | 2018-03-06 A | 2 | 100% | 2018-03-04 |  |  |  |  |  |
| 18 | 1.3 | ارسال نسخه نهایی | milestone | 0d | 2018-03-07 A | 2018-03-07 A | 17 | 100% | 2018-03-04 |  |  |  |  |  |
| 19 | 2 | **طراحی و پیاده سازی تست موردهای کاربردی ارتباط با مدیریت و ثبت نام** |  | 37d | 2018-03-07 A | 2018-04-23 A |  | 100% |  |  | 328h | 328h | 1,640 | 1,640 |
| 20 | 2.1 | طراحی wireframe |  | 10d | 2018-03-07 A | 2018-03-19 A |  | 100% | 2018-04-14 | Ali; MohamadAmin; Vahid | 240h | 240h | 1,200 | 1,200 |
| 21 | 2.2 | **مورد کاربردی ثبت نام** |  | 3d | 2018-04-14 A | 2018-04-17 A |  | 100% | 2018-04-30 |  | 48h | 48h | 240 | 240 |
| 22 | 2.2.1 | طراحی نمودار مورد کاربری |  | 1d | 2018-04-14 A | 2018-04-14 A | 20 | 100% |  | Ali; Vahid | 16h | 16h | 80 | 80 |
| 23 | 2.2.2 | جدول توضیحات هر مورد کاربردی |  | 1d | 2018-04-16 A | 2018-04-16 A | 22 | 100% |  | Ali; Vahid | 16h | 16h | 80 | 80 |
| 24 | 2.2.3 | طراحی و پیاده سازی سناریو تست هر مورد کاربردی |  | 1d | 2018-04-17 A | 2018-04-17 A | 23 | 100% |  | Ali; Vahid | 16h | 16h | 80 | 80 |

| ID | WBS | Task | Duration | Start | Finish | Predecessors | Complete | Remaining | Actual finish | Total slack | Free slack | Deadline | Resources | Work | Actual work | Cost | Actual cost |
| --- | --- | --- | --- | --- | --- | --- | --- | --- | --- | --- | --- | --- | --- | --- | --- | --- | --- |
| 25 | 2.3 | **مورد کاربردی ارتباط با مدیریت** | 3d | 2018-04-14 A | 2018-04-17 |  | 100% |  | 2018-04-23 |  |  | 2018-04-30 |  | 40h | 40h | 200 | 200 |
| 26 | 2.3.1 | طراحی نمودار | 1d | 2018-04-14 A | 2018-04-14 A | 20 | 100% |  |  |  |  |  | MohamadAmin | 8h | 8h | 40 | 40 |
| 27 | 2.3.2 | جدول توضیحات هر مورد کاربردی | 1d | 2018-04-16 A | 2018-04-16 A | 26 | 100% |  |  |  |  |  | MohamadAmin | 8h | 8h | 40 | 40 |
| 28 | 2.3.3 | طراحی و سناریو تست هر مورد کاربردی | 3d | 2018-04-17 A | 2018-04-23 A | 27 | 100% |  |  |  |  |  | MohamadAmin | 24h | 24h | 120 | 120 |
| 29 | 3 | **تکمیل مورد‌های کاربردی و پیاده سازی سناریوی تست** | 21d | 2018-04-30 A | 2018-05-28 |  | 85% | 3.24d |  | 12d |  |  |  | 280h | 236.8h | 1,400 | 1,184 |
| 30 | 3.1 | **موارد کاربردی سامانه آتوریزیشن** | 7d | 2018-04-30 A | 2018-05-08 A |  | 100% |  |  |  |  | 2018-06-06 |  | 56h | 56h | 280 | 280 |
| 31 | 3.1.1 | طراحی نمودار | 1d | 2018-04-30 A | 2018-04-30 A | 20 | 100% |  |  |  |  |  | Ali | 8h | 8h | 40 | 40 |
| 32 | 3.1.2 | جدول توضیحات هر مورد کاربردی | 4d | 2018-05-01 A | 2018-05-04 A | 31 | 100% |  |  |  |  |  | Ali | 32h | 32h | 160 | 160 |
| 33 | 3.1.3 | سناریو تست هر مورد کاربردی | 2d | 2018-05-07 A | 2018-05-08 A | 32 | 100% |  |  |  |  |  | Ali | 16h | 16h | 80 | 80 |
| 34 | 3.2 | **موارد کاربردی سامانه مدیریت** | 7d | 2018-04-30 A | 2018-05-08 A |  | 100% |  |  |  |  | 2018-06-06 |  | 56h | 56h | 280 | 280 |
| 35 | 3.2.1 | طراحی نمودار | 1d | 2018-04-30 A | 2018-04-30 A | 20 | 100% |  |  |  |  |  | Vahid | 8h | 8h | 40 | 40 |
| 36 | 3.2.2 | جدول توضیحات هر مورد کاربردی | 4d | 2018-05-01 A | 2018-05-04 A | 35 | 100% |  |  |  |  |  | Vahid | 32h | 32h | 160 | 160 |
| 37 | 3.2.3 | سناریو تست هر مورد کاربردی | 2d | 2018-05-07 A | 2018-05-08 A | 36 | 100% |  |  |  |  |  | Vahid | 16h | 16h | 80 | 80 |
| 38 | 3.3 | **موارد کاربردی سامانه مالی** | 7d | 2018-04-30 A | 2018-05-08 A |  | 100% |  |  |  |  | 2018-06-06 |  | 56h | 56h | 280 | 280 |
| 39 | 3.3.1 | طراحی نمودار | 1d | 2018-04-30 A | 2018-04-30 A | 20 | 100% |  |  |  |  |  | MohamadAmin | 8h | 8h | 40 | 40 |
| 40 | 3.3.2 | جدول توضیحات هر مورد کاربردی | 4d | 2018-05-01 A | 2018-05-04 A | 39 | 100% |  |  |  |  |  | MohamadAmin | 32h | 32h | 160 | 160 |
| 41 | 3.3.3 | سناریو تست هر مورد کاربردی | 2d | 2018-05-07 A | 2018-05-08 A | 40 | 100% |  |  |  |  |  | MohamadAmin | 16h | 16h | 80 | 80 |
| 42 | 3.4 | **موارد کاربردی سامانه جریان کار** | 10d | 2018-05-09 A | 2018-05-22 |  | 86% | 1.4d |  | 16d |  | 2018-06-13 |  | 80h | 68.8h | 400 | 344 |
| 43 | 3.4.1 | طراحی نمودار | 2d | 2018-05-09 A | 2018-05-10 | 37 | 80% | 0.4d |  | 24d |  |  | Vahid | 16h | 12.8h | 80 | 64 |
| 44 | 3.4.2 | جدول توضیحات هر مورد کاربردی | 7d | 2018-05-11 A | 2018-05-21 A | 43 | 100% |  |  |  |  |  | Ali | 56h | 56h | 280 | 280 |
| 45 | 3.4.3 | سناریو تست هر مورد کاربردی | 1d | 2018-05-22 | 2018-05-22 | 44 |  |  |  | 12d | 0d |  | MohamadAmin | 8h |  | 40 |  |
| 46 | 3.5 | **طراحی سناریو تست سیستمی** | 4d | 2018-05-23 | 2018-05-28 |  |  |  |  | 12d |  | 2018-06-13 |  | 32h |  | 160 |  |
| 47 | 3.5.1 | تست ارتباط سامانه مالی و جریان کار | 1d | 2018-05-23 | 2018-05-23 | 45 |  |  |  | 12d | 0d |  | Ali | 8h |  | 40 |  |
| 48 | 3.5.2 | تست ارتباط سامانه مدیریت و مالی | 1d | 2018-05-24 | 2018-05-24 | 47 |  |  |  | 12d | 0d |  | Ali | 8h |  | 40 |  |
| 49 | 3.5.3 | تست ارتباط سامانه آتوریزیشن و مدیریت | 1d | 2018-05-25 | 2018-05-25 | 48 |  |  |  | 12d | 0d |  | Ali | 8h |  | 40 |  |
| 50 | 3.5.4 | تست ارتباط سامانه آتورزیشن جریان کار | 1d | 2018-05-28 | 2018-05-28 | 49 |  |  |  | 12d |  |  | Ali | 8h |  | 40 |  |

| ID | WBS | Task | Duration | Start | Finish | Predecessors | Total slack | Free slack | Constraint | Deadline | Resources | Work | Cost |
| --- | --- | --- | --- | --- | --- | --- | --- | --- | --- | --- | --- | --- | --- |
| 51 | 4 | **پیاده‌سازی و تحویل ERD** | 33.75d | 2018-06-13 | 2018-07-30 |  | 0d |  |  |  |  | 686h | 3,430 |
| 52 | 4.1 | طراحی پایگاه‌داده | 2d | 2018-06-13 | 2018-06-14 |  | 0d |  | start no earlier than 2018-06-13 | 2018-06-20 | Ali | 16h | 80 |
| 53 | 4.2 | **آماده‌سازی بستر توسعه** | 0.75d | 2018-06-15 | 2018-06-15 |  | 0d |  |  | 2018-06-20 |  | 6h | 30 |
| 54 | 4.2.1 | طراحی ساختار فایلی پروژه | 3h | 2018-06-15 | 2018-06-15 | 52 | 0d |  |  |  | Ali | 3h | 15 |
| 55 | 4.2.2 | آماده‌سازی بستر git | 1h | 2018-06-15 | 2018-06-15 | 54 | 0d |  |  |  | Ali | 1h | 5 |
| 56 | 4.2.3 | آماده‌سازی بستر Continues Integration | 2h | 2018-06-15 | 2018-06-15 | 55 | 0d |  |  |  | Ali | 2h | 10 |
| 57 | 4.3 | **پیاده‌سازی میکرو‌سرویس‌ها** | 28d | 2018-06-15 | 2018-07-25 |  | 0d |  |  | 2018-08-16 |  | 640h | 3,200 |
| 58 | 4.3.1 | **پیاده‌سازی میکروسرویس جریان کار** | 16d | 2018-06-15 | 2018-07-09 |  | 0d |  |  |  |  | 256h | 1,280 |
| 59 | 4.3.1.1 | پیاده‌سازی تست سناریو اصلی | 2d | 2018-06-15 | 2018-06-19 | 52, 53 | 0d |  |  |  | MohamadAmin; Vahid | 32h | 160 |
| 60 | 4.3.1.2 | پیاده‌سازی منطق اصلی | 3d | 2018-06-19 | 2018-06-22 | 59 | 0d |  |  |  | MohamadAmin; Vahid | 48h | 240 |
| 61 | 4.3.1.3 | پیاده‌سازی تست‌ سناریو‌های فرعی | 5d | 2018-06-22 | 2018-06-29 | 60 | 0d |  |  |  | MohamadAmin; Vahid | 80h | 400 |
| 62 | 4.3.1.4 | پیاده‌سازی منطق‌های فرعی | 6d | 2018-06-29 | 2018-07-09 | 61 | 0d |  |  |  | MohamadAmin; Vahid | 96h | 480 |
| 63 | 4.3.2 | **پیاده‌سازی میکروسرویس آتوریزیشن** | 12d | 2018-06-15 | 2018-07-03 |  | 4d |  |  |  |  | 96h | 480 |
| 64 | 4.3.2.1 | پیاده‌سازی تست سناریو اصلی | 1d | 2018-06-15 | 2018-06-18 | 56 | 4d | 0d |  |  | Ali | 8h | 40 |
| 65 | 4.3.2.2 | پیاده‌سازی منطق اصلی | 3d | 2018-06-18 | 2018-06-21 | 64 | 4d | 0d |  |  | Ali | 24h | 120 |
| 66 | 4.3.2.3 | پیاده‌سازی تست‌ سناریو‌های فرعی | 3d | 2018-06-21 | 2018-06-26 | 65 | 4d | 0d |  |  | Ali | 24h | 120 |
| 67 | 4.3.2.4 | پیاده‌سازی منطق‌های فرعی | 5d | 2018-06-26 | 2018-07-03 | 66 | 4d | 0d |  |  | Ali | 40h | 200 |
| 68 | 4.3.3 | **پیاده‌سازی میکروسرویس مدیریت** | 12d | 2018-07-09 | 2018-07-25 |  | 0d |  |  |  |  | 192h | 960 |
| 69 | 4.3.3.1 | پیاده‌سازی تست سناریو اصلی | 1d | 2018-07-09 | 2018-07-10 | 52, 53, 62 | 0d |  |  |  | MohamadAmin | 8h | 40 |
| 70 | 4.3.3.2 | پیاده‌سازی منطق اصلی | 3d | 2018-07-10 | 2018-07-13 | 69 | 0d |  |  |  | MohamadAmin | 24h | 120 |
| 71 | 4.3.3.3 | پیاده‌سازی تست‌ سناریو‌های فرعی | 3d | 2018-07-13 | 2018-07-18 | 70 | 0d |  |  |  | MohamadAmin | 24h | 120 |
| 72 | 4.3.3.4 | پیاده‌سازی منطق‌های فرعی | 5d | 2018-07-18 | 2018-07-25 | 71 | 0d |  |  |  | MohamadAmin | 40h | 200 |
| 73 | 4.3.3.5 | **پیاده‌سازی میکرو‌سرویس مالی** | 12d | 2018-07-09 | 2018-07-25 |  | 0d |  |  |  |  | 96h | 480 |
| 74 | 4.3.3.5.1 | پیاده‌سازی تست سناریو اصلی | 1d | 2018-07-09 | 2018-07-10 | 52, 53, 62 | 0d |  |  |  | Vahid | 8h | 40 |
| 75 | 4.3.3.5.2 | پیاده‌سازی منطق اصلی | 3d | 2018-07-10 | 2018-07-13 | 74 | 0d |  |  |  | Vahid | 24h | 120 |
| 76 | 4.3.3.5.3 | پیاده‌سازی تست‌ سناریو‌های فرعی | 3d | 2018-07-13 | 2018-07-18 | 75 | 0d |  |  |  | Vahid | 24h | 120 |
| 77 | 4.3.3.5.4 | پیاده‌سازی منطق‌های فرعی | 5d | 2018-07-18 | 2018-07-25 | 76 | 0d |  |  |  | Vahid | 40h | 200 |

| ID | WBS | Task | Duration | Start | Finish | Predecessors | Total slack | Free slack | Constraint | Deadline | Resources | Work | Cost |
| --- | --- | --- | --- | --- | --- | --- | --- | --- | --- | --- | --- | --- | --- |
| 78 | 4.3.4 | **پیاده‌سازی تست‌های سیستمی** | 12d | 2018-07-03 | 2018-07-19 |  | 4d |  |  |  |  | 96h | 480 |
| 79 | 4.3.4.1 | پیاده‌سازی تست ارتباط سامانه مالی و جریان کار | 1d | 2018-07-03 | 2018-07-04 | 52, 53, 67 | 4d | 0d |  |  | Ali | 8h | 40 |
| 80 | 4.3.4.2 | پیاده‌سازی تست ارتباط سامانه مدیریت و مالی | 3d | 2018-07-04 | 2018-07-09 | 79 | 4d | 0d |  |  | Ali | 24h | 120 |
| 81 | 4.3.4.3 | پیاده‌سازی تست ارتباط سامانه آتوریزیشن و مدیریت | 3d | 2018-07-09 | 2018-07-12 | 80 | 4d | 0d |  |  | Ali | 24h | 120 |
| 82 | 4.3.4.4 | پیاده‌سازی تست ارتباط سامانه آتورزیشن جریان کار | 5d | 2018-07-12 | 2018-07-19 | 81 | 4d |  |  |  | Ali | 40h | 200 |
| 83 | 4.4 | deployment و تحویل | 3d | 2018-07-25 | 2018-07-30 | 57 | 0d |  | start no earlier than 2018-04-13 | 2018-08-23 | Ali; MohamadAmin; Vahid | 24h | 120 |
